Schedule from GanttProject, 2017-01-11 to 2017-07-08.

## Calendars

- Project calendar: Mon-Sun working.

## Resources

| Resource |
| --- |
| ssohail |
| cgriffin |
| javedm |
| aarehman |
| ziaa |
| mahmad |
| hsrivast |
| araghura |
| atraza |

## Schedule

| ID | WBS | Task | Duration | Start | Finish | Complete | Resources | Jira |
| --- | --- | --- | --- | --- | --- | --- | --- | --- |
| 1 | 1 | **Project** | 179d | 2017-01-11 | 2017-07-08 | 81% |  |  |
| 2 | 1.1 | **SPL-A1 M.5/D.3** | 31d | 2017-01-18 | 2017-02-17 | 100% |  | MEH-2773 |
| 3 | 1.1.1 | Integrate audio and IPU ACPI tables into the guest ACPI tables for SPL A1 | 2d | 2017-02-01 | 2017-02-02 | 100% | ssohail | MEH-2830 |
| 4 | 1.1.2 | Increase memory allocated for VM1. | 1d | 2017-01-24 | 2017-01-24 | 100% | cgriffin | MEH-2761 |
| 5 | 1.1.3 | Evaluate/Integrate patch provided by ABU for the TSC issue | 1d | 2017-02-03 | 2017-02-03 | 100% | javedm | MEH-2839 |
| 6 | 1.1.4 | **Development Drops** | 26d | 2017-01-23 | 2017-02-17 | 100% |  | MEH-2860 |
| 7 | 1.1.4.1 | MEHV internal release 1.3 | 1d | 2017-01-23 | 2017-01-23 | 100% | javedm | MEH-2806 |
| 8 | 1.1.4.2 | MEHV internal release 1.4 | 2d | 2017-01-26 | 2017-01-27 | 100% | javedm | MEH-2822 |
| 9 | 1.1.4.3 | MEHV internal release 1.5 | 1d | 2017-02-02 | 2017-02-02 | 100% | javedm | MEH-2837 |
| 10 | 1.1.4.4 | MEHV internal release 1.6 | 1d | 2017-02-08 | 2017-02-08 | 100% | javedm | MEH-2859 |
| 11 | 1.1.4.5 | MEHV internal release 1.7 | 1d | 2017-02-17 | 2017-02-17 | 100% | javedm | MEH-2886 |
| 12 | 1.1.5 | **Boot Time Optimizations** | 11d | 2017-02-07 | 2017-02-17 | 100% |  | MEH-2851 |
| 13 | 1.1.5.1 | Measure boot time | 11d | 2017-02-07 | 2017-02-17 | 100% | javedm | MEH-2856 |
| 14 | 1.1.5.2 | Try delayed GTT initialization with i915.tsd_init | 3d | 2017-02-13 | 2017-02-15 | 100% | aarehman | MEH-2870 |
| 15 | 1.1.5.3 | Optimize delays observed during boot time on VM0 and VM1 | 7d | 2017-02-09 | 2017-02-15 | 100% |  | MEH-2769 |
| 16 | 1.1.6 | **CPU Performance** | 20d | 2017-01-20 | 2017-02-08 | 100% |  | MEH-2786 |
| 17 | 1.1.6.1 | Run CPU benchmarks and tune performance on guest virtual machines. | 20d | 2017-01-20 | 2017-02-08 | 100% |  | MEH-2793 |
| 18 | 1.1.6.2 | Remove rdtsc virtualization and use tsc offsetting instead for offsetting boot time bias | 1d | 2017-01-30 | 2017-01-30 | 100% | ssohail | MEH-2824 |
| 19 | 1.1.7 | **Bugs** | 29d | 2017-01-18 | 2017-02-15 | 100% |  | MEH-2817 |
| 20 | 1.1.7.1 | TSC frequency should be calculated properly | 6d | 2017-02-09 | 2017-02-14 | 100% | ssohail | MEH-2864 |
| 21 | 1.1.7.2 | VM life cycle management should be char-device based rather than syscall based | 7d | 2017-02-08 | 2017-02-14 | 100% | ssohail | MEH-2857 |
| 22 | 1.1.7.3 | Investigate and fix kernel timer issues on VM1 and VM0 (if there are issues observed on VM0) | 15d | 2017-01-19 | 2017-02-02 | 100% | cgriffin | MEH-2796 |
| 23 | 1.1.7.4 | Update CS for APs using value from ICR. | 4d | 2017-01-20 | 2017-01-23 | 100% | javedm | MEH-2798 |
| 24 | 1.1.7.5 | i2c driver fails on VM0 | 1d | 2017-01-24 | 2017-01-24 | 100% | javedm | MEH-2651 |
| 25 | 1.1.7.6 | VM1 unable to boot with multiple cpus when ACPI enabled | 2d | 2017-01-18 | 2017-01-19 | 100% | javedm | MEH-2789 |
| 26 | 1.1.7.7 | Preemption Timer Interrupt hitting earlier than configured period | 2d | 2017-01-26 | 2017-01-27 | 100% | ssohail | MEH-2820 |

| ID | WBS | Task | Duration | Start | Finish | Complete | Resources | Jira |
| --- | --- | --- | --- | --- | --- | --- | --- | --- |
| 27 | 1.1.7.8 | **Foreground bug** | 7d | 2017-02-09 | 2017-02-15 | 100% |  | MEH-2872 |
| 28 | 1.1.7.8.1 | Sync signal needed between VM1 and VM0 to set foreground | 5d | 2017-02-09 | 2017-02-13 | 100% | aarehman | MEH-2858 |
| 29 | 1.1.7.8.2 | Workaround for set foreground bug | 5d | 2017-02-10 | 2017-02-14 | -100% | aarehman | MEH-2867 |
| 30 | 1.1.7.8.3 | Integrate Intel's fix for set foreground bug | 3d | 2017-02-13 | 2017-02-15 | -100% | javedm | MEH-2871 |
| 31 | 1.1.7.9 | **Console Logs analysis** | 3d | 2017-02-07 | 2017-02-09 | 100% |  | MEH-2862 |
| 32 | 1.1.7.9.1 | Analyze console logs between XenGT Vs MEHV and qualify the nature of graphics related errors and warnings | 3d | 2017-02-07 | 2017-02-09 | 100% | ziaa | MEH-2847 |
| 33 | 1.1.7.9.2 | Investigate why atomic warning is observed when nuclear_pageflip is disabled: | 3d | 2017-02-07 | 2017-02-09 | 100% | aarehman | MEH-2861 |
| 34 | 1.2 | **SPL-A2 M.6/D.4** | 49d | 2017-02-14 | 2017-04-03 | 100% |  | MEH-2772 |
| 35 | 1.2.1 | **Boot Time Optimizations** | 30d | 2017-02-19 | 2017-03-20 | 100% |  | MEH-2906 |
| 36 | 1.2.1.1 | Optimize delays observed during boot time on VM0 and VM1 | 12d | 2017-02-19 | 2017-03-02 | -100% | cgriffin | MEH-2893 |
| 37 | 1.2.1.2 | Eliminate hypercall at end of vgt emulation thread completion | 14d | 2017-03-07 | 2017-03-20 | 100% | cgriffin | MEH-2939 |
| 38 | 1.2.1.3 | Investigate necessity and overhead of HVM Loader. | 1d | 2017-02-28 | 2017-02-28 | 100% | cgriffin | MEH-2919 |
| 39 | 1.2.1.4 | Determine cause of 6.5 second delay during VM1 boot | 18d | 2017-02-28 | 2017-03-17 | -100% | cgriffin | MEH-2916 |
| 40 | 1.2.1.5 | Remove HVM loader and boot VM1 in parallel to VM0 | 1d | 2017-02-28 | 2017-02-28 | 100% | aarehman | MEH-2922 |
| 41 | 1.2.1.6 | Verify Clydes Patches for early vgt instance creation on neusoft | 5d | 2017-03-06 | 2017-03-10 | 100% | aarehman | MEH-2935 |
| 42 | 1.2.1.7 | Verify Clydes Patch for NFS timeout and do boottime analysis | 1d | 2017-03-13 | 2017-03-13 | 100% | aarehman | MEH-2953 |
| 43 | 1.2.2 | **Enable support for POC 5** | 13d | 2017-02-24 | 2017-03-08 | 100% | cgriffin | MEH-2940 |
| 44 | 1.2.2.1 | POC 5 – 02/24 | 6d | 2017-02-24 | 2017-03-01 | -100% | mahmad | MEH-2895 |
| 45 | 1.2.2.2 | Enable GVT-g from POC 5 on MRB | 1d | 2017-03-08 | 2017-03-08 | 100% | cgriffin | MEH-2941 |
| 46 | 1.2.3 | **MEHV for GP 1.0.1 and ABL 1651** | 23d | 2017-02-20 | 2017-03-14 | 100% |  | MEH-2882 |
| 47 | 1.2.3.1 | GP 1.0.1 (ABU) | 18d | 2017-02-20 | 2017-03-09 | -100% |  | MEH-2894 |
| 48 | 1.2.3.2 | ABL 1651 from ABU | 1d | 2017-03-10 | 2017-03-10 | -100% |  | MEH-2907 |
| 49 | 1.2.3.3 | Enable GP 1.0.1 on Neusoft hardware | 13d | 2017-03-02 | 2017-03-14 | 100% | javedm | MEH-2888 |
| 50 | 1.2.3.4 | Enable ABL 1651 on Neusoft hardware | 1d | 2017-02-21 | 2017-02-21 | -100% | javedm | MEH-2887 |

| ID | WBS | Task | Duration | Start | Finish | Complete | Resources | Jira |
| --- | --- | --- | --- | --- | --- | --- | --- | --- |
| 51 | 1.2.4 | **Development Drops** | 27d | 2017-03-02 | 2017-03-28 | 100% |  | MEH-2929 |
| 52 | 1.2.4.1 | MEHV internal release 1.6.1 | 1d | 2017-03-16 | 2017-03-16 | -100% | hsrivast | HL-427 |
| 53 | 1.2.4.2 | Custom MEHV 1.6.1 build modified ACPI | 1d | 2017-03-28 | 2017-03-28 | -100% | javedm | HL-439 |
| 54 | 1.2.4.3 | MEHV internal release 1.8 | 1d | 2017-03-02 | 2017-03-02 | -100% | hsrivast | HL-402 |
| 55 | 1.2.4.4 | MEHV internal release 2.0 | 2d | 2017-03-14 | 2017-03-15 | -100% | hsrivast | HL-412 |
| 56 | 1.2.4.5 | MEHV internal release 2.1 | 1d | 2017-03-28 | 2017-03-28 | -100% | hsrivast | HL-445 |
| 57 | 1.2.5 | **Misc** | 38d | 2017-02-22 | 2017-03-31 | 100% |  | MEH-2943 |
| 58 | 1.2.5.1 | Automate kernel entry address update in guests.cfg | 5d | 2017-03-10 | 2017-03-14 | -100% | javedm | MEH-2938 |
| 59 | 1.2.5.2 | GPU benchmarks SPLA-1 release | 1d | 2017-03-07 | 2017-03-07 | 100% | aarehman | MEH-2936 |
| 60 | 1.2.5.3 | Allocate ample memory for ACPI tables to remove need for manual fixup on medications to ACPI tables | 1d | 2017-02-22 | 2017-02-22 | -100% | javedm | MEH-2762 |
| 61 | 1.2.5.4 | Hypervisor documentation updates | 4d | 2017-03-28 | 2017-03-31 | 100% | javedm | MEH-2909 |
| 62 | 1.2.6 | **Bugs** | 49d | 2017-02-14 | 2017-04-03 | 100% |  | MEH-2785 |
| 63 | 1.2.6.1 | POC5 kernel bring-up: EPT violation | 1d | 2017-03-08 | 2017-03-08 | -100% | javedm | HL-407 |
| 64 | 1.2.6.2 | SPI device /dev/spi0.0 does not come up in Cluster VM. | 12d | 2017-03-03 | 2017-03-14 | 100% | javedm | MEH-2930 |
| 65 | 1.2.6.3 | Display artifacts on IVI display on Neusoft hardware | 1d | 2017-03-03 | 2017-03-03 | 100% | ziaa | MEH-2931 |
| 66 | 1.2.6.4 | Improve MEHV char dev implementation. | 8d | 2017-03-02 | 2017-03-09 | 100% | ssohail | MEH-2908 |
| 67 | 1.2.6.5 | Investigate why MEHV guest CPU performance is slower than Xen | 14d | 2017-02-28 | 2017-03-13 | -100% | ziaa | MEH-2913 |
| 68 | 1.2.6.6 | **Reboot Issues** | 49d | 2017-02-14 | 2017-04-03 | 100% |  | MEH-2942 |
| 69 | 1.2.6.6.1 | IVI VM is not able to reboot itself | 18d | 2017-02-14 | 2017-03-03 | 100% | ssohail | MEH-2865 |
| 70 | 1.2.6.6.2 | Reboot of Cluster VM does not reboot IVI VM | 20d | 2017-03-15 | 2017-04-03 | 100% | ssohail | MEH-2963 |
| 71 | 1.2.6.6.3 | Verify vm reboot use cases | 2d | 2017-03-27 | 2017-03-28 | -100% | javedm | MEH-2970 |
| 72 | 1.2.6.7 | remove ADV7481A and ADV7481B from ACPI Tables | 1d | 2017-02-21 | 2017-02-21 | -100% | javedm | HL-394 |
| 73 | 1.2.6.8 | inconvenient choice of hypervisor hotkey | 3d | 2017-02-28 | 2017-03-02 | 100% | ssohail | HL-387 |
| 74 | 1.2.6.9 | i2c busses in hypervisor | 1d | 2017-02-28 | 2017-02-28 | -100% | hsrivast | HL-393 |
| 75 | 1.2.6.10 | hypervisor kernel header file Non-GPL again | 1d | 2017-03-03 | 2017-03-03 | -100% | javedm | HL-378 |
| 76 | 1.2.6.11 | Writing to a i2c device on VM1 after creating a vgt instance on VM0 crashes both the VM0 and VM1 | 8d | 2017-02-27 | 2017-03-06 | -100% | ziaa | HL-368 |
| 77 | 1.2.6.12 | Interrupts --Some of the device interrupts are NOT being delivered to CPU1 and CPU2 in VM1 | 1d | 2017-03-20 | 2017-03-20 | -100% | javedm | HL-367 |
| 78 | 1.2.6.13 | MMC1 timeout message on Linux console with Intel beta release | 1d | 2017-03-21 | 2017-03-21 | -100% | javedm | HL-264 |
| 79 | 1.2.6.14 | Resource Assignment Correction in VM's | 1d | 2017-03-01 | 2017-03-01 | -100% | javedm | HL-325 |

| ID | WBS | Task | Duration | Start | Finish | Complete | Resources | Jira |
| --- | --- | --- | --- | --- | --- | --- | --- | --- |
| 80 | 1.3 | **SPL-A3** | 10d | 2017-04-03 | 2017-04-12 | 73% |  | MEH-2996 |
| 81 | 1.3.1 | MEHV 2.2 - ACPI table for two MIPI-DSI displays on IVI VM | 2d | 2017-04-04 | 2017-04-05 | -100% | javedm | HL-457 |
| 82 | 1.3.2 | Cluster VM reboot not successful with Graphics Virtualization | 10d | 2017-04-03 | 2017-04-12 | 50% | cgriffin | MEH-2995 |
| 83 | 1.3.3 | Crash with MEHV 2.0 after following command "echo l > /proc/sysrq-trigger" | 7d | 2017-04-05 | 2017-04-11 | -100% | aarehman | HL-433 |
| 84 | 1.3.4 | Rename MEHV_POChar to mehv_ops | 1d | 2017-04-06 | 2017-04-06 | -100% | javedm | MEH-2977 |
| 85 | 1.4 | **PCR3** | 24d | 2017-04-12 | 2017-05-05 |  |  | MEH-2992 |
| 86 | 1.4.1 | USBMUX Device Assignment | 1d | 2017-04-12 | 2017-04-12 |  |  | MEH-2997 |
| 87 | 1.4.2 | SPI - Device Assignment | 5d | 2017-04-13 | 2017-04-17 |  |  | MEH-2998 |
| 88 | 1.4.3 | PWM - Device Assignment | 18d | 2017-04-18 | 2017-05-05 |  |  | MEH-2999 |
| 89 | 1.5 | **SPL-B M.8/D.5** | 57d | 2017-03-31 | 2017-05-26 |  |  | MEH-2959 |
| 90 | 1.5.1 | B Samples - M.7/P.8 from Neusoft | 1d | 2017-03-31 | 2017-03-31 | -100% |  | MEH-2961 |
| 91 | 1.5.2 | GVT-g EC6 Release from Intel | 1d | 2017-04-28 | 2017-04-28 | -100% |  | MEH-2956 |
| 92 | 1.5.3 | GVT-g Pre-Alpha Release from Intel | 1d | 2017-05-26 | 2017-05-26 | -100% |  | MEH-2957 |
| 93 | 1.6 | **SPL-C M.10/D.6** | 2d | 2017-07-07 | 2017-07-08 |  |  | MEH-2960 |
| 94 | 1.6.1 | GVT-g Alpha Release from Intel | 1d | 2017-07-07 | 2017-07-07 | -100% |  | MEH-2958 |
| 95 | 1.6.2 | C Samples - M9/P.8 from Neusoft | 1d | 2017-07-08 | 2017-07-08 | -100% |  | MEH-2962 |
| 96 | 1.7 | **Boot Time Optimizations** | 44d | 2017-02-28 | 2017-04-12 | 100% |  | MEH-2964 |
| 97 | 1.7.1 | GVT-g performance optimization and functionality discussions with Intel | 18d | 2017-02-28 | 2017-03-17 | -100% | cgriffin | MEH-2921 |
| 98 | 1.7.2 | Investigate running GVT-g emulation on a interrupt top half and bottom half. | 1d | 2017-03-07 | 2017-03-07 | 100% | cgriffin | MEH-2917 |
| 99 | 1.7.3 | Implement performance suggestions Intel grahics team | 3d | 2017-02-28 | 2017-03-02 | -100% | cgriffin | MEH-2914 |
| 100 | 1.7.4 | Investigate perfmance gains to be had if VM1's VGT instance is created in tandem with VM0's. | 21d | 2017-02-28 | 2017-03-20 | 100% | cgriffin | MEH-2918 |
| 101 | 1.7.5 | Quantify and investigate any opportunities for optimizing boot time w.r.t NFS based FS. | 1d | 2017-04-12 | 2017-04-12 | -100% | cgriffin | MEH-2915 |
| 102 | 1.7.6 | In conjunction with early VGT instance creation synchronize VM1 start to maximize VM1 early boot. | 24d | 2017-02-28 | 2017-03-23 | -100% | cgriffin | MEH-2920 |
| 103 | 1.8 | **Code clean up (umbrella task)** | 34d | 2017-03-13 | 2017-04-15 | 85% | javedm | MEH-2944 |
| 104 | 1.8.1 | Fix redundant header inclusions across the x64 Hypervisor code base | 1d | 2017-04-12 | 2017-04-12 | -100% | javedm | MEH-2945 |
| 105 | 1.8.2 | Error checking across the x64 Hypervisor code base | 1d | 2017-04-03 | 2017-04-03 | -100% | aarehman | MEH-2946 |
| 106 | 1.8.3 | Remove dead code | 1d | 2017-03-17 | 2017-03-17 | -100% | javedm | MEH-2947 |
| 107 | 1.8.4 | Remove redundant APIs | 2d | 2017-04-04 | 2017-04-05 | 38% | ssohail | MEH-2948 |
| 108 | 1.8.5 | Conform to Nucleus coding standard across code base | 5d | 2017-03-17 | 2017-03-21 | -100% | ziaa | MEH-2949 |
| 109 | 1.8.6 | Fix issues with abstractions and code organization | 1d | 2017-04-13 | 2017-04-13 | -100% | araghura | MEH-2950 |
| 110 | 1.8.7 | Implement consistent debug logging | 1d | 2017-04-14 | 2017-04-14 | -100% | araghura | MEH-2951 |
| 111 | 1.8.8 | Code Standardization | 2d | 2017-03-13 | 2017-03-14 | 100% | ssohail | MEH-2955 |
| 112 | 1.8.9 | TODO: Move ACPI_Init to hv_vm_acpi | 1d | 2017-04-15 | 2017-04-15 | -100% | javedm | MEH-2971 |
| 113 | 1.8.10 | TODO: Unhandled MMIO Access | 1d | 2017-04-10 | 2017-04-10 | -100% | javedm | MEH-3000 |

| ID | WBS | Task | Duration | Start | Finish | Complete | Resources | Jira |
| --- | --- | --- | --- | --- | --- | --- | --- | --- |
| 114 | 1.9 | **Backlog** | 100d | 2017-01-11 | 2017-04-20 | 61% |  | MEH-2788 |
| 115 | 1.9.1 | wifi driver fails to load in the IVI after a vmshutdown and vmboot sequence | 2d | 2017-04-12 | 2017-04-13 |  | ssohail | HL-320 |
| 116 | 1.9.2 | Hang on cluster kernel with intel kernel config option | 1d | 2017-03-24 | 2017-03-24 | -100% | javedm | HL-434 |
| 117 | 1.9.3 | I2C Bus 3 (LPSS_I2C_3) is assigned to cluster (vm0) | 1d | 2017-04-14 | 2017-04-14 | -100% | javedm | HL-334 |
| 118 | 1.9.4 | Kernel warning on VM1 in intel_display.c on winston init | 1d | 2017-03-27 | 2017-03-27 | -100% | aarehman | MEH-2968 |
| 119 | 1.9.5 | GPIO virtualization | 1d | 2017-04-15 | 2017-04-15 | -100% | atraza | MEH-2892 |
| 120 | 1.9.6 | Audio virtualization | 2d | 2017-02-27 | 2017-02-28 | -100% | atraza | MEH-2891 |
| 121 | 1.9.7 | Enablement of 4 Displays (MIPI-DSI) bridge | 1d | 2017-04-16 | 2017-04-16 | -100% |  | MEH-2883 |
| 122 | 1.9.8 | 3x 1080p video decoding support | 1d | 2017-04-17 | 2017-04-17 | -100% |  | MEH-2884 |
| 123 | 1.9.9 | Develop intra-guest communication/signalling mechanism and infrastructure. | 4d | 2017-02-10 | 2017-02-13 | 100% |  | MEH-2866 |
| 124 | 1.9.10 | Remove dependency on MPS code. | 1d | 2017-03-20 | 2017-03-20 | 100% | javedm | MEH-2768 |
| 125 | 1.9.11 | Validate ACPI enablement to confirm the resource partitioning requirements for Neusoft HS7 system are met | 1d | 2017-04-18 | 2017-04-18 | -100% | hsrivast | MEH-2750 |
| 126 | 1.9.12 | Remove the delay between VM boots | 1d | 2017-04-19 | 2017-04-19 | -100% | ssohail | MEH-2759 |
| 127 | 1.9.13 | MEHV should be backwards compatible with older releases/drops to Neusoft. | 6d | 2017-01-25 | 2017-01-30 | 25% |  | MEH-2814 |
| 128 | 1.9.14 | Black Duck analysis | 1d | 2017-04-20 | 2017-04-20 | -100% | araghura | MEH-2890 |
| 129 | 1.9.15 | **Enabling Video on MEHV on NS HS7 HW** | 14d | 2017-03-01 | 2017-03-14 | 30% |  | MEH-2776 |
| 130 | 1.9.15.1 | Determine work involved in enabling Video on MEHV on NS HS7 HW | 1d | 2017-03-14 | 2017-03-14 | -100% | ziaa | MEH-2765 |
| 131 | 1.9.15.2 | Running Video on Winston | 9d | 2017-03-01 | 2017-03-09 | -100% | aarehman | MEH-2934 |
| 132 | 1.9.16 | **Stability/Improvements** | 57d | 2017-02-16 | 2017-04-13 | 100% |  | MEH-2777 |
| 133 | 1.9.16.1 | HVM loader clean-up | 1d | 2017-04-12 | 2017-04-12 | -100% | javedm | MEH-2770 |
| 134 | 1.9.16.2 | Verify GPU recovery | 1d | 2017-04-13 | 2017-04-13 | -100% | ziaa | MEH-2767 |
| 135 | 1.9.16.3 | Gvt-g operation during VM1 reboots | -34d | 2017-02-16 | 2017-02-16 | -100% |  | MEH-2766 |
| 136 | 1.9.17 | **Validate Intel Graphics** | 93d | 2017-01-11 | 2017-04-13 | 100% |  | MEH-2825 |
| 137 | 1.9.17.1 | Define and conduct endurance tests that validate reliability of gVTG graphics | 9d | 2017-01-19 | 2017-01-27 | 100% | ziaa | MEH-2794 |
| 138 | 1.9.17.2 | Validate Intel Graphics test suite and other userspace graphics components needed for Neusoft HS7 requirement specification works on MEHV/gVTG | 17d | 2017-01-11 | 2017-01-27 | 100% | aarehman | MEH-2752 |
| 139 | 1.9.17.3 | Try xsWayland rootfs sent by ABU | 4d | 2017-01-20 | 2017-01-23 | 100% | ziaa | MEH-2797 |
| 140 | 1.9.17.4 | Investigate failing gem_exec_flush test | 13d | 2017-01-27 | 2017-02-08 | 100% | ziaa | MEH-2823 |
| 141 | 1.9.17.5 | Investigate failing gem_exec_parallel test | 7d | 2017-02-02 | 2017-02-08 | 100% | ziaa | MEH-2834 |
| 142 | 1.9.17.6 | Intel-GPU-tools Unit-tests on XEN and MEHV | 22d | 2017-01-30 | 2017-02-20 | 100% | aarehman | MEH-2827 |
| 143 | 1.9.17.7 | Investigating failed unit-test: kms_busy | 1d | 2017-01-31 | 2017-01-31 | 100% | aarehman | MEH-2826 |
| 144 | 1.9.17.8 | Investigating failed unit-test: kms_properties | 1d | 2017-02-02 | 2017-02-02 | 100% | aarehman | MEH-2831 |
| 145 | 1.9.17.9 | Investigating failed unit-test: testdisplay | 1d | 2017-02-03 | 2017-02-03 | 100% | aarehman | MEH-2841 |
| 146 | 1.9.17.10 | Investigate failing unit tests under VM1 of MEHV | 1d | 2017-04-12 | 2017-04-12 | -100% | ziaa | MEH-2911 |
| 147 | 1.9.17.11 | Investigate GPU performance regression with MEVH | 1d | 2017-04-13 | 2017-04-13 | -100% |  | MEH-2912 |

| ID | WBS | Task | Duration | Start | Finish | Complete | Resources | Jira |
| --- | --- | --- | --- | --- | --- | --- | --- | --- |
| 148 | 1.9.18 | **Enablement of 3rd display Pipeline** | 19d | 2017-02-13 | 2017-03-03 | 10% |  | MEH-2775 |
| 149 | 1.9.18.1 | 1.0.1 Kernel with 3rd display enabled (ABU) | 1d | 2017-02-24 | 2017-02-24 | -100% |  | MEH-2896 |
| 150 | 1.9.18.2 | Determine work involved in enabling third display pipeline on MEHV on NS HS7 HW | 1d | 2017-02-13 | 2017-02-13 | -100% | ziaa | MEH-2763 |
| 151 | 1.9.18.3 | Enable 3rd display on xen | 1d | 2017-02-23 | 2017-02-23 | 100% | aarehman | MEH-2900 |
| 152 | 1.9.18.4 | Third Display Enablement | 7d | 2017-02-25 | 2017-03-03 |  |  | MEH-2902 |
